# Organising the ANZ Analytics Innovation Conference

Schedule from ProjectLibre, 2026-03-16 to 2026-05-08.

## Calendars

- Standard: Mon-Fri 08:00-12:00, 13:00-17:00; Sat-Sun off.

## Resources

| Resource |
| --- |
| Unassigned |
| Ambalika |
| Bharath |
| Eunjung |
| Gibson |
| Sreenath |

## Schedule

| ID | WBS | Task | Duration | Start | Finish | Predecessors | Resources |
| --- | --- | --- | --- | --- | --- | --- | --- |
| 1 | 1 | **ANZ Analytics Innovation Conference** | 40d | 2026-03-16 | 2026-05-08 |  |  |
| 2 | 1.1 | Initial Project Kick-Off | 2d | 2026-03-16 | 2026-03-17 |  | Ambalika; Bharath; Eunjung; Gibson; Sreenath |
| 3 | 1.2 | Define Conference Themes & Tracks | 6d | 2026-03-18 | 2026-03-25 | 2 | Ambalika; Eunjung |
| 4 | 1.3 | Keynote Speaker Identification | 6d | 2026-03-18 | 2026-03-25 | 2 | Gibson |
| 5 | 1.4 | Venue Booking & Contracting | 1d | 2026-03-18 | 2026-03-18 | 2 | Sreenath |
| 6 | 1.5 | Planning complete | 0d | 2026-03-25 | 2026-03-25 | 3, 4 |  |
| 7 | 1.6 | Hybrid Technical Setup | 10d | 2026-03-19 | 2026-04-01 | 5 | Bharath |
| 8 | 1.7 | Sponsorship Package Development | 5d | 2026-03-26 | 2026-04-01 | 3 | Eunjung |
| 9 | 1.8 | Sponsor Outreach & Negotiation | 9d | 2026-04-02 | 2026-04-14 | 8 | Eunjung; Gibson |
| 10 | 1.9 | Keynote Speaker Confirmation | 7d | 2026-03-26 | 2026-04-03 | 4 | Ambalika |
| 11 | 1.10 | Marketing Plan Development | 7d | 2026-04-06 | 2026-04-14 | 3, 10 | Ambalika |
| 12 | 1.11 | Promotional Campaign Execution | 12d | 2026-04-15 | 2026-04-30 | 11 | Ambalika |
| 13 | 1.12 | Sponsorship & Marketing | 0d | 2026-04-14 | 2026-04-14 | 7, 8, 9, 10, 11 |  |
| 14 | 1.13 | Catering & Layout Planning | 9d | 2026-03-19 | 2026-03-31 | 5 | Sreenath |
| 15 | 1.14 | Volunteer Recruitment & Training | 7d | 2026-04-01 | 2026-04-09 | 14 | Sreenath |
| 16 | 1.15 | On-Site Logistics Preparation | 9d | 2026-04-15 | 2026-04-27 | 7, 9, 15 | Bharath; Sreenath |
| 17 | 1.16 | Operations & Logistics | 0d | 2026-04-27 | 2026-04-27 | 13, 14, 15, 16 |  |
| 18 | 1.17 | Conference Delivery Day | 1d | 2026-05-01 | 2026-05-01 | 12, 16 | Ambalika; Bharath; Eunjung; Gibson; Sreenath |
| 19 | 1.18 | Post-Event Feedback & Reporting | 5d | 2026-05-04 | 2026-05-08 | 18 | Ambalika; Gibson |
| 20 | 1.19 | Delivery and Closure | 0d | 2026-05-01 | 2026-05-01 | 18 |  |
